# Gantt_chart_Team7_Project_Updated

Schedule from MS Project, 2016-09-15 to 2016-12-08, A marks actual dates.

## Calendars

- Standard: Mon-Fri 08:00-12:00, 13:00-17:00; Sat-Sun off. Exceptions (off unless hours are given): 2016-09-17 to 2016-09-18 08:00-12:00, 13:00-17:00, 2016-09-24 to 2016-09-25 08:00-12:00, 13:00-17:00, 2016-10-01 to 2016-10-02 08:00-12:00, 13:00-17:00, 2016-10-08 to 2016-10-09 08:00-12:00, 13:00-17:00, 2016-10-15 to 2016-10-16 08:00-12:00, 13:00-17:00, 2016-10-22 to 2016-10-23 08:00-12:00, 13:00-17:00, 2016-10-29 to 2016-10-30 08:00-12:00, 13:00-17:00, 2016-11-05 to 2016-11-06 08:00-12:00, 13:00-17:00, 2016-11-19 to 2016-11-20 08:00-12:00, 13:00-17:00, 2016-11-26 08:00-12:00, 13:00-17:00, 2016-12-03 to 2016-12-04 08:00-12:00, 13:00-17:00.

## Resources

| Resource |
| --- |
| Anita |
| Suriyaa |
| Luke |
| Thejes |
| Suraj |

## Schedule

| ID | WBS | Task | Type | Duration | Start | Finish | Predecessors | Complete | Remaining | Constraint | Resources | Work | Actual work | Task Doer | task owner | Resposibility level |
| --- | --- | --- | --- | --- | --- | --- | --- | --- | --- | --- | --- | --- | --- | --- | --- | --- |
| 1 | 1 | **Understanding Systematic Biases** |  | 82d | 2016-09-15 A | 2016-12-08 |  | 49% | 42.22d |  |  | 1632h | 872h |  |  |  |
| 2 | 1.1 | **Creation of Project Management documents** |  | 29d | 2016-09-15 A | 2016-10-13 |  | 98% | 0.58d |  |  | 872h | 872h |  |  |  |
| 3 | 1.1.1 | **Communication Plan** |  | 25d | 2016-09-15 A | 2016-10-09 |  | 94% | 1.39d |  |  | 312h | 312h |  |  |  |
| 4 | 1.1.1.1 | Brainstorm | manual | 1d | 2016-09-15 | 2016-09-15 |  |  |  |  |  |  |  |  |  |  |
| 5 | 1.1.1.2 | Initial Draft |  | 4d | 2016-09-15 A | 2016-09-18 A | 4 | 100% |  | start no earlier than 2016-09-15 | Luke | 32h | 32h | Anita | Anita | Responsible |
| 6 | 1.1.1.3 | Review |  | 2d | 2016-09-19 A | 2016-09-20 A | 5 | 100% |  | start no earlier than 2016-09-19 | Anita; Suraj; Suriyaa; Thejes | 64h | 64h |  |  | Accountable |
| 7 | 1.1.1.4 | Final Draft |  | 2d | 2016-09-21 A | 2016-09-22 A | 6 | 100% |  | finish no earlier than 2016-09-21 | Luke | 16h | 16h | Suriyaa | Suriyaa | Responsible |
| 8 | 1.1.1.5 | Format and submit |  | 1d | 2016-09-23 A | 2016-09-23 A | 7 | 100% |  |  | Luke | 8h | 8h | Luke |  | Accountable |
| 9 | 1.1.1.6 | Incorporate changes based on feedback | manual | 8d | 2016-09-24 A | 2016-10-01 A | 8 | 100% |  |  | Anita; Luke; Suriyaa | 192h | 192h |  |  | Responsible |
| 10 | 1.1.1.7 | Submit | milestone, manual | 0d | 2016-10-09 A | 2016-10-09 A | 9 | 100% |  |  | Luke |  |  |  |  | Responsible |
| 11 | 1.1.2 | **Charter** |  | 15d | 2016-09-22 A | 2016-10-06 A |  | 100% |  |  |  | 360h | 360h |  |  |  |
| 12 | 1.1.2.1 | Brainstorm |  | 1d | 2016-09-22 A | 2016-09-22 A |  | 100% |  | start no earlier than 2016-09-22 | Thejes; Anita; Luke; Suraj; Suriyaa | 8h | 8h | Thejes | Luke | Responsible |
| 13 | 1.1.2.2 | Initial Draft |  | 3d | 2016-09-23 A | 2016-09-25 A | 12 | 100% |  |  | Anita | 24h | 24h |  |  | Responsible |
| 14 | 1.1.2.3 | Review |  | 2d | 2016-09-26 A | 2016-09-27 A | 13 | 100% |  | start no earlier than 2016-09-26 | Suraj; Luke; Suriyaa; Thejes | 16h | 16h | Anita | Anita | Accountable |
| 15 | 1.1.2.4 | Final Draft | manual | 1d | 2016-09-28 A | 2016-09-28 A | 14 | 100% |  |  | Anita; Suriyaa | 16h | 16h | Luke |  | Responsible |
| 16 | 1.1.2.5 | Format and submit | manual | 1d | 2016-09-29 A | 2016-09-29 A | 15 | 100% |  |  | Anita; Suriyaa | 16h | 16h |  |  | Responsible |
| 17 | 1.1.2.6 | Incorporate changes based on feedback | manual | 7d | 2016-09-30 A | 2016-10-06 A | 16 | 100% |  |  | Anita; Luke; Suraj; Suriyaa; Thejes | 280h | 280h |  |  | Responsible |
| 18 | 1.1.2.7 | Submit | milestone, manual | 0d | 2016-10-06 A | 2016-10-06 A | 17 | 100% |  |  | Luke |  |  |  |  | Responsible |
| 19 | 1.1.3 | **Work Breakdown structrue** |  | 8d | 2016-10-06 A | 2016-10-13 A |  | 100% |  |  |  | 96h | 96h |  | Thejes |  |
| 20 | 1.1.3.1 | Brainstorm | manual | 1d | 2016-10-06 A | 2016-10-06 A |  | 100% |  |  | Anita; Luke; Suraj; Suriyaa; Thejes | 40h | 40h |  |  | Responsible |
| 21 | 1.1.3.2 | Initial Draft |  | 4d | 2016-10-07 A | 2016-10-10 A | 20 | 100% |  |  | Suraj | 32h | 32h | Suraj |  | Responsible |
| 22 | 1.1.3.3 | Review |  | 2d | 2016-10-11 A | 2016-10-12 A | 21 | 100% |  | start no earlier than 2016-10-08 | Anita | 16h | 16h | Anita |  | Accountable |
| 23 | 1.1.3.4 | Final Draft | milestone | 0d | 2016-10-12 A | 2016-10-12 A | 22 | 100% |  |  | Suriyaa |  |  | Suraj |  | Accountable |
| 24 | 1.1.3.5 | Formatting | manual | 1d | 2016-10-13 A | 2016-10-13 A | 23 | 100% |  |  | Suriyaa | 8h | 8h |  |  | Responsible |

| ID | WBS | Task | Type | Duration | Start | Finish | Predecessors | Complete | Remaining | Actual start | Total slack | Free slack | Constraint | Resources | Work | Actual work | task owner | Resposibility level | Task Doer |
| --- | --- | --- | --- | --- | --- | --- | --- | --- | --- | --- | --- | --- | --- | --- | --- | --- | --- | --- | --- |
| 25 | 1.1.4 | **Gantt Chart** |  | 4d | 2016-10-10 | 2016-10-13 A |  | 100% |  | 2016-10-06 |  |  |  |  | 104h | 104h | Suraj |  |  |
| 26 | 1.1.4.1 | Brainstorm | manual | 1d | 2016-10-06 A | 2016-10-06 A |  | 100% |  |  |  |  |  | Anita; Luke; Suraj; Suriyaa; Thejes | 40h | 40h |  | Responsible |  |
| 27 | 1.1.4.2 | Initial Draft |  | 4d | 2016-10-07 A | 2016-10-10 A | 26 | 100% |  |  |  |  | finish no earlier than 2016-10-10 | Thejes | 32h | 32h |  | Responsible | Thejes |
| 28 | 1.1.4.3 | Review |  | 2d | 2016-10-11 A | 2016-10-12 A | 27 | 100% |  |  |  |  | finish no earlier than 2016-10-12 | Anita | 16h | 16h |  | Accountable | Anita |
| 29 | 1.1.4.4 | Final Draft |  | 1d | 2016-10-12 A | 2016-10-12 A | 28 | 100% |  |  |  |  |  | Anita | 8h | 8h |  | Responsible | Thejes |
| 30 | 1.1.4.5 | Submit WBS and Gantt Chart |  | 1d | 2016-10-13 A | 2016-10-13 A | 29 | 100% |  |  |  |  | finish no earlier than 2016-10-13 | Luke | 8h | 8h |  | Responsible | Luke |
| 31 | 1.2 | **Project Updates** |  | 29d | 2016-10-13 A | 2016-11-10 |  |  | 29d |  |  |  |  |  | 568h |  |  |  |  |
| 32 | 1.2.1 | **Project Update 1** |  | 8d | 2016-10-13 A | 2016-10-20 |  |  | 8d |  |  |  |  |  | 136h |  |  |  |  |
| 33 | 1.2.1.1 | Research |  | 2d | 2016-10-13 A | 2016-10-14 |  |  | 2d |  | 46d | 0d | start no earlier than 2016-10-13 | Suriyaa; Luke | 16h |  |  | Responsible | Suriyaa |
| 34 | 1.2.1.2 | Brainstorm | manual | 1d | 2016-10-15 | 2016-10-15 | 33 |  |  |  |  |  |  | Luke; Suraj; Suriyaa; Thejes; Anita | 40h |  |  | Responsible |  |
| 35 | 1.2.1.3 | Collate Points |  | 2d | 2016-10-15 | 2016-10-16 | 33 |  |  |  | 46d | 0d | start no earlier than 2016-10-15 | Luke; Suriyaa | 24h |  |  | Responsible | Luke |
| 36 | 1.2.1.4 | Populate initial draft template |  | 2d | 2016-10-17 | 2016-10-18 | 35 |  |  |  | 46d | 0d |  | Suriyaa; Luke | 32h |  |  | Responsible | Suriyaa |
| 37 | 1.2.1.5 | Review |  | 1d | 2016-10-19 | 2016-10-19 | 36 |  |  |  | 46d | 0d |  | Suraj | 8h |  |  | Accountable | Suraj |
| 38 | 1.2.1.6 | Final Draft |  | 1d | 2016-10-20 | 2016-10-20 | 37 |  |  |  | 46d | 0d |  | Suriyaa; Luke | 16h |  |  | Responsible | Suriyaa |
| 39 | 1.2.1.7 | Submit | milestone | 0d | 2016-10-20 | 2016-10-20 | 38 |  |  |  | 46d |  |  | Suraj |  |  |  | Accountable | Suraj |
| 40 | 1.2.2 | **Project Update 2** |  | 8d | 2016-10-20 | 2016-10-27 |  |  |  |  |  |  |  |  | 136h |  |  |  |  |
| 41 | 1.2.2.1 | Incorporate changes from Project update 1 |  | 1d | 2016-10-20 | 2016-10-20 |  |  |  |  | 39d | 0d |  | Suraj; Luke | 16h |  |  | Responsible | Suraj |
| 42 | 1.2.2.2 | Research |  | 2d | 2016-10-21 | 2016-10-22 | 41 |  |  |  | 39d | 0d | start no earlier than 2016-10-21 | Luke; Suraj | 32h |  |  | Responsible | Luke |
| 43 | 1.2.2.3 | Brainstorm | manual | 1d | 2016-10-23 | 2016-10-23 | 42 |  |  |  |  |  |  | Luke; Suraj; Suriyaa; Thejes; Anita | 40h |  |  | Responsible |  |
| 44 | 1.2.2.4 | Collate Points |  | 1d | 2016-10-24 | 2016-10-24 | 43 |  |  |  | 39d | 0d |  | Anita | 8h |  |  | Accountable | Anita |
| 45 | 1.2.2.5 | Populate initial draft template |  | 1d | 2016-10-25 | 2016-10-25 | 44 |  |  |  | 39d | 0d |  | Suraj; Luke | 16h |  |  | Responsible | Suraj |
| 46 | 1.2.2.6 | Review |  | 1d | 2016-10-26 | 2016-10-26 | 45 |  |  |  | 39d | 0d |  | Anita | 8h |  |  | Responsible | Luke |
| 47 | 1.2.2.7 | Final Draft |  | 1d | 2016-10-27 | 2016-10-27 | 46 |  |  |  | 39d | 0d |  | Suraj; Luke | 16h |  |  | Responsible | Suraj |
| 48 | 1.2.2.8 | Submit | milestone | 0d | 2016-10-27 | 2016-10-27 | 47 |  |  |  | 39d |  | start no earlier than 2016-10-27 | Luke |  |  |  | Responsible | Luke |

| ID | WBS | Task | Type | Duration | Start | Finish | Predecessors | Total slack | Free slack | Constraint | Resources | Work | Task Doer | Resposibility level |
| --- | --- | --- | --- | --- | --- | --- | --- | --- | --- | --- | --- | --- | --- | --- |
| 49 | 1.2.3 | **Project Update 3** |  | 8d | 2016-10-27 | 2016-11-03 |  |  |  |  |  | 136h |  |  |
| 50 | 1.2.3.1 | Incorporate changes from Project update 2 |  | 1d | 2016-10-27 | 2016-10-27 |  | 34d | 0d | start no earlier than 2016-10-27 | Thejes | 8h | Thejes | Responsible |
| 51 | 1.2.3.2 | Research |  | 2d | 2016-10-28 | 2016-10-29 | 50 | 37d |  | start no earlier than 2016-10-28 | Luke; Thejes | 32h | Luke | Responsible |
| 52 | 1.2.3.3 | Brainstorm | manual | 1d | 2016-10-30 | 2016-10-30 | 50 |  |  |  | Anita; Luke; Suraj; Suriyaa; Thejes | 40h |  | Responsible |
| 53 | 1.2.3.4 | Collate Points |  | 1d | 2016-10-31 | 2016-10-31 | 52 | 32d | 0d |  | Thejes; Luke | 16h | Thejes | Responsible |
| 54 | 1.2.3.5 | Populate initial draft template |  | 1d | 2016-11-01 | 2016-11-01 | 53 | 32d | 0d |  | Luke; Thejes | 16h | Luke | Responsible |
| 55 | 1.2.3.6 | Review |  | 1d | 2016-11-02 | 2016-11-02 | 54 | 32d | 0d |  | Suriyaa | 8h | Suriyaa | Accountable |
| 56 | 1.2.3.7 | Final Draft |  | 1d | 2016-11-03 | 2016-11-03 | 55 | 32d | 0d |  | Luke; Thejes | 16h | Luke | Responsible |
| 57 | 1.2.3.8 | Submit | milestone | 0d | 2016-11-03 | 2016-11-03 | 56 | 32d |  |  | Thejes |  | Thejes | Responsible |
| 58 | 1.2.4 | **Project Update 4** |  | 8d | 2016-11-03 | 2016-11-10 |  |  |  |  |  | 160h |  |  |
| 59 | 1.2.4.1 | Incorporate changes from Project update 3 |  | 1d | 2016-11-03 | 2016-11-03 |  | 25d | 0d | start no earlier than 2016-11-03 | Suriyaa; Anita | 16h | Suriyaa | Responsible |
| 60 | 1.2.4.2 | Research |  | 2d | 2016-11-04 | 2016-11-05 | 59 | 25d | 0d |  | Anita; Suriyaa | 32h | Anita | Responsible |
| 61 | 1.2.4.3 | Brainstorm | manual | 1d | 2016-11-06 | 2016-11-06 | 60 |  |  |  | Anita; Luke; Suraj; Suriyaa; Thejes | 40h |  | Responsible |
| 62 | 1.2.4.4 | Collate Points |  | 1d | 2016-11-06 | 2016-11-06 | 60 | 25d | 0d |  | Suriyaa; Anita | 16h | Suriyaa | Responsible |
| 63 | 1.2.4.5 | Populate initial draft template |  | 2d | 2016-11-07 | 2016-11-08 | 62 | 25d | 0d |  | Anita; Suriyaa | 32h | Thejes | Accountable |
| 64 | 1.2.4.6 | Review |  | 1d | 2016-11-09 | 2016-11-09 | 63 | 25d | 0d |  | Thejes | 8h | Anita | Accountable |
| 65 | 1.2.4.7 | Final Draft |  | 1d | 2016-11-10 | 2016-11-10 | 64 | 25d | 0d |  | Anita; Suriyaa | 16h | Thejes | Responsible |
| 66 | 1.2.4.8 | Submit | milestone | 0d | 2016-11-10 | 2016-11-10 | 65 | 25d |  |  | Suriyaa |  | Suriyaa | Responsible |
| 67 | 1.3 | **Final Presentation** |  | 25d | 2016-11-10 | 2016-12-08 |  |  |  |  |  | 192h |  |  |
| 68 | 1.3.1 | **Presentation document** |  | 16d | 2016-11-10 | 2016-11-27 |  |  |  |  |  | 104h |  |  |
| 69 | 1.3.1.1 | Brainstorm | manual | 1d | 2016-11-10 | 2016-11-10 |  |  |  |  |  |  |  |  |
| 70 | 1.3.1.2 | Collate Points |  | 2d | 2016-11-10 | 2016-11-11 |  | 12d | 0d |  | Suriyaa | 16h | Suriyaa | Responsible |
| 71 | 1.3.1.3 | Populate initial draft template |  | 5d | 2016-11-14 | 2016-11-18 | 70 | 12d | 0d |  | Thejes | 40h | Thejes | Responsible |
| 72 | 1.3.1.4 | Review |  | 2d | 2016-11-19 | 2016-11-20 | 71 | 12d | 0d |  | Anita | 16h | Anita | Responsible |
| 73 | 1.3.1.5 | Final Draft |  | 2d | 2016-11-21 | 2016-11-22 | 72 | 12d | 0d |  | Suraj | 16h | Suraj | Responsible |
| 74 | 1.3.1.6 | Format and submit |  | 1d | 2016-11-23 | 2016-11-23 | 73 | 12d | 0d |  | Anita | 8h | Anita | Responsible |
| 75 | 1.3.1.7 | Incorporate changes if feedback obtained |  | 1d | 2016-11-24 | 2016-11-24 | 74 | 12d |  |  | Luke | 8h | Luke | Accountable |
| 76 | 1.3.1.8 | Submit | milestone, manual | 0d | 2016-11-27 | 2016-11-27 |  |  |  |  |  |  |  |  |

| ID | WBS | Task | Type | Duration | Start | Finish | Predecessors | Total slack | Free slack | Constraint | Resources | Work | Resposibility level | Task Doer |
| --- | --- | --- | --- | --- | --- | --- | --- | --- | --- | --- | --- | --- | --- | --- |
| 77 | 1.3.2 | **Presentation** |  | 5d | 2016-12-03 | 2016-12-08 |  |  |  |  |  | 88h |  |  |
| 78 | 1.3.2.1 | Brainstorm and allocate topics |  | 1d | 2016-12-03 | 2016-12-03 |  | 3d | 0d | start no earlier than 2016-12-03 | Anita; Luke; Suraj; Suriyaa; Thejes | 40h | Responsible |  |
| 79 | 1.3.2.2 | Timed dry run |  | 2d | 2016-12-04 | 2016-12-05 | 78 | 3d | 2d | start no earlier than 2016-12-04 | Anita; Suriyaa; Thejes | 48h | Responsible | Anita |
| 80 | 1.3.2.3 | Deliver presentation | milestone, manual | 0d | 2016-12-08 | 2016-12-08 | 79 |  |  |  | Anita; Suriyaa; Thejes |  | Responsible |  |
